# 29561_10193_3312021105942AM813182-v2013

Schedule from MS Project, 2021-03-31 to 2022-01-12, costs in $, A marks actual dates.
Sabian Technologies

## Calendars

- Standard: Mon-Fri 08:00-12:00, 13:00-17:00; Sat-Sun off.

## Resources

| Resource | Rate |
| --- | --- |
| Yukio Ashida | 98 |
| Kurt Zollinger | 63 |
| Junior Product Designer | 49 |
| Tom Bechur | 68 |
| Quality Engineer | 75 |
| Operations Specialist | 50 |
| Junior Product Designer 2 | 49 |
| Darryl Sandefur | 55 |

## Schedule

| ID | WBS | Task | Duration | Start | Finish | Predecessors | Complete | Baseline start | Baseline finish | Baseline duration | Total slack | Free slack | Resources | Work | Actual work | Cost | Baseline cost | Actual cost |
| --- | --- | --- | --- | --- | --- | --- | --- | --- | --- | --- | --- | --- | --- | --- | --- | --- | --- | --- |
| 1 | 1 | **Market Assessment** | 29.26d | 2021-03-31 A | 2021-05-11 A |  | 100% | 2021-03-31 | 2021-05-05 | 25.5d? |  |  |  | 468.16h | 468.16h | 37,686.88 | 32,844 | 37,686.88 |
| 2 | 1.1 | Evaluate market | 6.69d | 2021-03-31 A | 2021-04-08 A |  | 100% | 2021-03-31 | 2021-04-08 | 6d? |  |  | Kurt Zollinger; Yukio Ashida | 107.04h | 107.04h | 8,616.72 | 7,728 | 8,616.72 |
| 3 | 1.2 | Develop Business opportunity | 8.06d | 2021-04-08 A | 2021-04-20 A | 2 | 100% | 2021-04-08 | 2021-04-19 | 7d? |  |  | Kurt Zollinger; Yukio Ashida | 128.96h | 128.96h | 10,381.28 | 9,016 | 10,381.28 |
| 4 | 1.3 | Customer preference study | 12.13d | 2021-04-20 A | 2021-05-07 A | 3 | 100% | 2021-04-19 | 2021-05-03 | 10.5d? |  |  | Kurt Zollinger; Yukio Ashida | 194.08h | 194.08h | 15,623.44 | 13,524 | 15,623.44 |
| 5 | 1.4 | Business evaluation (NPV, etc.) | 2.38d | 2021-05-07 A | 2021-05-11 A | 4 | 100% | 2021-05-03 | 2021-05-05 | 2d? |  |  | Kurt Zollinger; Yukio Ashida | 38.08h | 38.08h | 3,065.44 | 2,576 | 3,065.44 |
| 6 | 2 | **Procurement** | 77.12d? | 2021-08-17 | 2021-12-02 |  |  | 2021-08-11 | 2021-11-26 | 77.12d? | 0d |  |  | 224h |  | 14,200 | 14,200 |  |
| 7 | 2.1 | Identify vendors | 7d? | 2021-08-17 | 2021-08-26 | 26, 73 |  | 2021-08-11 | 2021-08-20 | 7d? | 5.62d |  | Operations Specialist | 56h |  | 2,800 | 2,800 |  |
| 8 | 2.2 | Develop and Issue RFQ | 6d? | 2021-08-17 | 2021-09-03 | 73, 26 |  | 2021-08-11 | 2021-08-30 | 6d? | 0d |  | Operations Specialist | 48h |  | 2,400 | 2,400 |  |
| 9 | 2.3 | Issue sample (production equivalent) | 5d? | 2021-09-03 | 2021-09-10 | 26, 7, 8, 74 |  | 2021-08-30 | 2021-09-06 | 5d? | 0d |  | Quality Engineer | 40h |  | 3,000 | 3,000 |  |
| 10 | 2.4 | Assess RFQ responses and select vendors | 10d? | 2021-11-18 | 2021-12-02 | 78, 14 |  | 2021-11-12 | 2021-11-26 | 10d? | 3.5d |  | Quality Engineer | 80h |  | 6,000 | 6,000 |  |
| 11 | 3 | **Supplier Quality** | 38d? | 2021-09-10 | 2021-11-03 |  |  | 2021-09-06 | 2021-10-28 | 38d? | 0d |  |  | 256h |  | 16,960 | 16,960 |  |
| 12 | 3.1 | Perform supplier process capability | 7d? | 2021-09-10 | 2021-09-21 | 9 |  | 2021-09-06 | 2021-09-15 | 7d? | 0d |  | Operations Specialist; Tom Bechur | 112h |  | 6,608 | 6,608 |  |
| 13 | 3.2 | Approve sample parts | 8d? | 2021-09-21 | 2021-10-01 | 12, 75 |  | 2021-09-15 | 2021-09-27 | 8d? | 6.51d |  | Tom Bechur | 64h |  | 4,352 | 4,352 |  |
| 14 | 3.3 | Qualify Supplier | 10d? | 2021-10-20 | 2021-11-03 | 77, 13 |  | 2021-10-14 | 2021-10-28 | 10d? | 11.5d |  | Quality Engineer | 80h |  | 6,000 | 6,000 |  |
| 15 | 4 | **Design** | 46.5d? | 2021-05-11 | 2021-07-14 |  |  | 2021-05-05 | 2021-07-09 | 46.5d? | 0d |  |  | 456h |  | 22,344 | 22,344 |  |
| 16 | 4.1 | Design and development plan | 3d? | 2021-05-11 | 2021-05-14 | 5, 69 |  | 2021-05-05 | 2021-05-10 | 3d? | 0d |  | Junior Product Designer; Junior Product Designer 2 | 48h |  | 2,352 | 2,352 |  |
| 17 | 4.2 | Design specs. | 11d? | 2021-05-14 | 2021-05-31 | 16 |  | 2021-05-10 | 2021-05-25 | 11d? | 0d |  | Junior Product Designer; Junior Product Designer 2 | 176h |  | 8,624 | 8,624 |  |
| 18 | 4.3 | Identify testing requirements | 5d? | 2021-05-31 | 2021-06-07 | 17, 70, 50 |  | 2021-05-25 | 2021-06-01 | 5d? | 18d | 0d | Junior Product Designer; Junior Product Designer 2 | 80h |  | 3,920 | 3,920 |  |
| 19 | 4.4 | Risk analysis | 5d? | 2021-06-07 | 2021-06-14 | 18 |  | 2021-06-01 | 2021-06-08 | 5d? | 18d |  | Junior Product Designer; Junior Product Designer 2 | 80h |  | 3,920 | 3,920 |  |
| 20 | 4.5 | Design labeling | 2.5d? | 2021-07-08 | 2021-07-12 | 19, 71 |  | 2021-07-02 | 2021-07-07 | 2.5d? | 6d | 0d | Junior Product Designer; Junior Product Designer 2 | 40h |  | 1,960 | 1,960 |  |
| 21 | 4.6 | Approve design | 2d? | 2021-07-12 | 2021-07-14 | 20 |  | 2021-07-07 | 2021-07-09 | 2d? | 6d | 0d | Junior Product Designer; Junior Product Designer 2 | 32h |  | 1,568 | 1,568 |  |
| 22 | 5 | **Engineering** | 87.62d? | 2021-07-14 | 2021-11-15 |  |  | 2021-07-09 | 2021-11-09 | 87.62d? | 0d |  |  | 752h |  | 45,988 | 45,988 |  |
| 23 | 5.1 | Initial engineering specs. | 2.5d? | 2021-07-14 | 2021-07-19 | 21 |  | 2021-07-09 | 2021-07-13 | 2.5d? | 6d |  | Tom Bechur; Darryl Sandefur | 40h |  | 2,460 | 2,460 |  |
| 24 | 5.2 | Design verification activities | 3.5d? | 2021-07-27 | 2021-07-30 | 23, 72 |  | 2021-07-21 | 2021-07-27 | 3.5d? | 4.5d | 0d | Tom Bechur; Darryl Sandefur | 56h |  | 3,444 | 3,444 |  |
| 25 | 5.3 | Verification design review | 2d? | 2021-07-30 | 2021-08-03 | 24 |  | 2021-07-27 | 2021-07-29 | 2d? | 4.5d | 0d | Tom Bechur; Darryl Sandefur | 32h |  | 1,968 | 1,968 |  |
| 26 | 5.4 | Release pre-production specifications | 5d? | 2021-08-03 | 2021-08-10 | 25 |  | 2021-07-29 | 2021-08-05 | 5d? | 4.5d |  | Tom Bechur; Darryl Sandefur | 80h |  | 4,920 | 4,920 |  |
| 27 | 5.5 | Build functional model | 9d? | 2021-08-17 | 2021-08-30 | 26, 73 |  | 2021-08-11 | 2021-08-24 | 9d? | 3.62d |  | Tom Bechur; Darryl Sandefur | 144h |  | 8,856 | 8,856 |  |
| 28 | 5.6 | Design validation activities | 5d? | 2021-09-21 | 2021-09-28 | 75, 27, 12 |  | 2021-09-15 | 2021-09-22 | 5d? | 10d |  | Darryl Sandefur | 40h |  | 2,200 | 2,200 |  |
| 29 | 5.7 | Validation design review | 2d? | 2021-10-12 | 2021-10-14 | 28, 76 |  | 2021-10-06 | 2021-10-08 | 2d? | 2d | 0d | Tom Bechur; Darryl Sandefur | 32h |  | 1,968 | 1,968 |  |
| 30 | 5.8 | Approve model design | 2d? | 2021-10-14 | 2021-10-18 | 29 |  | 2021-10-08 | 2021-10-12 | 2d? | 2d |  | Tom Bechur; Darryl Sandefur | 32h |  | 1,968 | 1,968 |  |
| 31 | 5.9 | Design transfer activities | 18.5d? | 2021-10-20 | 2021-11-15 | 30, 36, 77 |  | 2021-10-14 | 2021-11-09 | 18.5d? | 0d |  | Tom Bechur; Darryl Sandefur | 296h |  | 18,204 | 18,204 |  |

| ID | WBS | Task | Duration | Start | Finish | Predecessors | Complete | Remaining | Baseline start | Baseline finish | Baseline duration | Total slack | Free slack | Resources | Work | Actual work | Cost | Baseline cost | Actual cost |
| --- | --- | --- | --- | --- | --- | --- | --- | --- | --- | --- | --- | --- | --- | --- | --- | --- | --- | --- | --- |
| 32 | 6 | **Engineering Quality** | 67.12d? | 2021-08-17 | 2021-11-18 |  |  |  | 2021-08-11 | 2021-11-12 | 67.12d? | 0d |  |  | 296h |  | 21,472 | 21,472 |  |
| 33 | 6.1 | Evaluate design specifications | 10d? | 2021-08-17 | 2021-08-31 | 73, 26 |  |  | 2021-08-11 | 2021-08-25 | 10d? | 2.62d |  | Quality Engineer | 80h |  | 6,000 | 6,000 |  |
| 34 | 6.2 | Develop testing protocol for prototype | 8d? | 2021-09-03 | 2021-09-15 | 26, 33, 74 |  |  | 2021-08-30 | 2021-09-09 | 8d? | 4d |  | Darryl Sandefur | 64h |  | 3,520 | 3,520 |  |
| 35 | 6.3 | Test prototype | 10d? | 2021-09-21 | 2021-10-05 | 75, 34, 27, 12 |  |  | 2021-09-15 | 2021-09-29 | 10d? | 5d |  | Quality Engineer | 80h |  | 6,000 | 6,000 |  |
| 36 | 6.4 | Evaluate results of tests and identify weaknesses | 6d? | 2021-10-12 | 2021-10-20 | 76, 35 |  |  | 2021-10-06 | 2021-10-14 | 6d? | 0d |  | Quality Engineer | 48h |  | 3,600 | 3,600 |  |
| 37 | 6.5 | Product release meetings | 3d? | 2021-11-15 | 2021-11-18 | 31, 36, 30 |  |  | 2021-11-09 | 2021-11-12 | 3d? | 0d |  | Yukio Ashida | 24h |  | 2,352 | 2,352 |  |
| 38 | 7 | **Manufacturing** | 78d? | 2021-09-21 | 2022-01-07 |  |  |  | 2021-09-15 | 2022-01-03 | 78d? | 0d |  |  | 452h |  | 22,600 | 22,600 |  |
| 39 | 7.1 | Process engineering plan | 15d? | 2021-09-21 | 2021-10-12 | 27, 12, 75 |  |  | 2021-09-15 | 2021-10-06 | 15d? | 0d |  | Operations Specialist | 120h |  | 6,000 | 6,000 |  |
| 40 | 7.2 | Develop production plan | 6d? | 2021-10-20 | 2021-10-28 | 77, 36, 29, 39 |  |  | 2021-10-14 | 2021-10-22 | 6d? | 15.5d |  | Operations Specialist | 48h |  | 2,400 | 2,400 |  |
| 41 | 7.3 | Develop production control plan | 8.5d? | 2021-11-18 | 2021-12-01 | 40, 14, 78 |  |  | 2021-11-12 | 2021-11-25 | 8.5d? | 0d |  | Operations Specialist | 68h |  | 3,400 | 3,400 |  |
| 42 | 7.4 | Approve production parts | 5d? | 2021-12-01 | 2021-12-08 | 41 |  |  | 2021-11-25 | 2021-12-02 | 5d? | 0d |  | Operations Specialist | 40h |  | 2,000 | 2,000 |  |
| 43 | 7.5 | Contracting for deliveries | 8d? | 2021-12-08 | 2021-12-20 | 42, 10 |  |  | 2021-12-02 | 2021-12-14 | 8d? | 0d |  | Operations Specialist | 64h |  | 3,200 | 3,200 |  |
| 44 | 7.6 | Submit production purchase order | 2d? | 2021-12-20 | 2021-12-22 | 43, 79 |  |  | 2021-12-14 | 2021-12-16 | 2d? | 0d |  | Operations Specialist | 16h |  | 800 | 800 |  |
| 45 | 7.7 | Production pilot test | 5d? | 2021-12-22 | 2021-12-29 | 44, 37 |  |  | 2021-12-16 | 2021-12-23 | 5d? | 0d |  | Operations Specialist | 40h |  | 2,000 | 2,000 |  |
| 46 | 7.8 | Debugging production system | 4d? | 2021-12-29 | 2022-01-04 | 45 |  |  | 2021-12-23 | 2021-12-29 | 4d? | 0d |  | Operations Specialist | 32h |  | 1,600 | 1,600 |  |
| 47 | 7.9 | Production release | 3d? | 2022-01-04 | 2022-01-07 | 46 |  |  | 2021-12-29 | 2022-01-03 | 3d? | 0d |  | Operations Specialist | 24h |  | 1,200 | 1,200 |  |
| 48 | 8 | **Commercialization** | 175.62d? | 2021-05-11 | 2022-01-12 |  |  |  | 2021-05-05 | 2022-01-06 | 175.62d? | 0d |  |  | 608h |  | 49,784 | 49,784 |  |
| 49 | 8.1 | Develop preliminary marketing plan | 2.5d? | 2021-05-11 | 2021-05-13 | 5, 69 |  |  | 2021-05-05 | 2021-05-10 | 2.5d? | 4d | 0d | Kurt Zollinger; Yukio Ashida | 40h |  | 3,220 | 3,220 |  |
| 50 | 8.2 | Develop marketing program | 7.5d? | 2021-05-13 | 2021-05-25 | 49 |  |  | 2021-05-10 | 2021-05-19 | 7.5d? | 4d |  | Kurt Zollinger; Yukio Ashida | 120h |  | 9,660 | 9,660 |  |
| 51 | 8.3 | Train sales team | 22d? | 2021-05-31 | 2021-06-30 | 50, 70 |  |  | 2021-05-25 | 2021-06-24 | 22d? | 6d |  | Kurt Zollinger | 176h |  | 11,088 | 11,088 |  |
| 52 | 8.4 | Advertising campaign | 28d? | 2021-05-31 | 2021-07-08 | 70, 50 |  |  | 2021-05-25 | 2021-07-02 | 28d? | 0d |  | Yukio Ashida | 224h |  | 21,952 | 21,952 |  |
| 53 | 8.5 | Show functional model at trade show | 3d? | 2021-09-27 | 2021-09-29 | 50, 75, 12, 27 |  |  | 2021-09-20 | 2021-09-23 | 3d? | 8.01d |  | Yukio Ashida | 24h |  | 2,352 | 2,352 |  |
| 54 | 8.6 | Product launch | 3d? | 2022-01-07 | 2022-01-12 | 47, 51, 52, 53 |  |  | 2022-01-03 | 2022-01-06 | 3d? | 0d |  | Kurt Zollinger | 24h |  | 1,512 | 1,512 |  |
| 55 | 9 | **Project Management** | 197.88d? | 2021-03-31 A | 2022-01-03 |  | 16% | 166.82d? | 2021-03-31 | 2021-12-28 | 194.12d? | 7d |  |  | 1176.96h | 288.96h | 88,707.04 | 83,236 | 17,771.04 |
| 56 | 9.1 | Project Management Period 1 | 18.06d? | 2021-03-31 A | 2021-04-26 A |  | 100% |  | 2021-03-31 | 2021-04-16 | 12.5d? |  |  | Tom Bechur; Darryl Sandefur | 288.96h | 288.96h | 17,771.04 | 12,300 | 17,771.04 |
| 57 | 9.2 | Project Management Period 2 | 7d? | 2021-05-11 | 2021-05-20 | 56, 69 |  |  | 2021-05-05 | 2021-05-14 | 7d? | 7d |  | Tom Bechur; Darryl Sandefur | 112h |  | 6,888 | 6,888 |  |
| 58 | 9.3 | Project Management Period 3 | 7d? | 2021-05-31 | 2021-06-09 | 70, 57 |  |  | 2021-05-25 | 2021-06-03 | 7d? | 21d |  | Tom Bechur; Darryl Sandefur | 112h |  | 6,888 | 6,888 |  |
| 59 | 9.4 | Project Management Period 4 | 13d? | 2021-07-08 | 2021-07-27 | 58, 71 |  |  | 2021-07-02 | 2021-07-21 | 13d? | 0d |  | Yukio Ashida | 104h |  | 10,192 | 10,192 |  |
| 60 | 9.5 | Project Management Period 5 | 15d? | 2021-07-27 | 2021-08-17 | 72, 59 |  |  | 2021-07-21 | 2021-08-11 | 15d? | 0d |  | Yukio Ashida | 120h |  | 11,760 | 11,760 |  |
| 61 | 9.6 | Project Management Period 6 | 9d? | 2021-08-17 | 2021-08-30 | 60, 73 |  |  | 2021-08-11 | 2021-08-24 | 9d? | 3.62d |  | Yukio Ashida | 72h |  | 7,056 | 7,056 |  |
| 62 | 9.7 | Project Management Period 7 | 11d? | 2021-09-03 | 2021-09-20 | 74, 61 |  |  | 2021-08-30 | 2021-09-14 | 11d? | 1d |  | Yukio Ashida | 88h |  | 8,624 | 8,624 |  |
| 63 | 9.8 | Project Management Period 8 | 3d? | 2021-09-21 | 2021-09-24 | 62, 75 |  |  | 2021-09-15 | 2021-09-20 | 3d? | 12d |  | Yukio Ashida | 24h |  | 2,352 | 2,352 |  |
| 64 | 9.9 | Project Management Period 9 | 4d? | 2021-10-12 | 2021-10-18 | 76, 63 |  |  | 2021-10-06 | 2021-10-12 | 4d? | 2d |  | Yukio Ashida | 32h |  | 3,136 | 3,136 |  |
| 65 | 9.10 | Project Management Period 10 | 5d? | 2021-10-20 | 2021-10-27 | 64, 77 |  |  | 2021-10-14 | 2021-10-21 | 5d? | 16.5d |  | Yukio Ashida | 40h |  | 3,920 | 3,920 |  |
| 66 | 9.11 | Project Management Period 11 | 13d? | 2021-11-18 | 2021-12-07 | 78, 65 |  |  | 2021-11-12 | 2021-12-01 | 13d? | 8.5d |  | Darryl Sandefur | 104h |  | 5,720 | 5,720 |  |
| 67 | 9.12 | Project Management Period 12 | 10d? | 2021-12-20 | 2022-01-03 | 66, 79 |  |  | 2021-12-14 | 2021-12-28 | 10d? | 7d |  | Darryl Sandefur | 80h |  | 4,400 | 4,400 |  |

| ID | WBS | Task | Type | Duration | Start | Finish | Predecessors | Baseline start | Baseline finish | Baseline duration | Total slack |
| --- | --- | --- | --- | --- | --- | --- | --- | --- | --- | --- | --- |
| 68 | 10 | **Milestones** |  | 175.62d? | 2021-05-11 | 2022-01-12 |  | 2021-05-05 | 2022-01-06 | 175.62d? | 0d |
| 69 | 10.1 | Milestone 1 | milestone | 0d? | 2021-05-11 | 2021-05-11 | 56, 5 | 2021-05-05 | 2021-05-05 | 0d? | 0d |
| 70 | 10.2 | Milestone 2 | milestone | 0d? | 2021-05-31 | 2021-05-31 | 17, 50, 57 | 2021-05-25 | 2021-05-25 | 0d? | 0d |
| 71 | 10.3 | Milestone 3 | milestone | 0d? | 2021-07-08 | 2021-07-08 | 58, 52, 51, 19 | 2021-07-02 | 2021-07-02 | 0d? | 0d |
| 72 | 10.4 | Milestone 4 | milestone | 0d? | 2021-07-27 | 2021-07-27 | 23, 59 | 2021-07-21 | 2021-07-21 | 0d? | 0d |
| 73 | 10.5 | Milestone 5 | milestone | 0d? | 2021-08-17 | 2021-08-17 | 60, 26 | 2021-08-11 | 2021-08-11 | 0d? | 0d |
| 74 | 10.6 | Milestone 6 | milestone | 0d? | 2021-09-03 | 2021-09-03 | 27, 33, 8, 7, 61 | 2021-08-30 | 2021-08-30 | 0d? | 0d |
| 75 | 10.7 | Milestone 7 | milestone | 0d? | 2021-09-21 | 2021-09-21 | 62, 12, 34 | 2021-09-15 | 2021-09-15 | 0d? | 0d |
| 76 | 10.8 | Milestone 8 | milestone | 0d? | 2021-10-12 | 2021-10-12 | 28, 39, 13, 63, 53, 35 | 2021-10-06 | 2021-10-06 | 0d? | 0d |
| 77 | 10.9 | Milestone 9 | milestone | 0d? | 2021-10-20 | 2021-10-20 | 64, 36, 30 | 2021-10-14 | 2021-10-14 | 0d? | 0d |
| 78 | 10.10 | Milestone 10 | milestone | 0d? | 2021-11-18 | 2021-11-18 | 40, 37, 14, 65 | 2021-11-12 | 2021-11-12 | 0d? | 0d |
| 79 | 10.11 | Milestone 11 | milestone | 0d? | 2021-12-20 | 2021-12-20 | 66, 43 | 2021-12-14 | 2021-12-14 | 0d? | 0d |
| 80 | 10.12 | Milestone 12 | milestone | 0d? | 2022-01-12 | 2022-01-12 | 67, 54 | 2022-01-06 | 2022-01-06 | 0d? | 0d |
